# МустафаеваПМ_ЛР4_менеджмент

Schedule from MS Project, 2025-04-02 to 2025-11-05, costs in ₽.

## Calendars

- Стандартный: Mon-Fri 09:00-13:00, 14:00-18:00; Sat-Sun off.

## Resources

| Resource | Group | Rate | Cost per use |
| --- | --- | --- | --- |
| Программист базы данных | Программист | 1062.5 |  |
| Руководитель проекта | Руководитель | 1375 |  |
| Программист-тестировщик | Тестировщик | 937.5 |  |
| Инженер | Специалист | 625 |  |
| Системный аналитик | Специалист | 875 |  |
| Специалист по закупкам | Специалист | 562.5 |  |
| Компьютер | Вычислительная техника |  | 60000 |
| Программист интерфейса пользователя | Программист | 1062.5 |  |
| Программист-разработчик | Программист | 1125 |  |
| Руководитель группы разработчиков | Руководитель | 1250 |  |
| Руководитель группы тестировщиков | Руководитель | 1187.5 |  |
| Дизайнер тестов | Тестировщик | 812.5 |  |
| Администратор | Специалист | 750 |  |
| Аналитик | Специалист | 625 |  |
| Маркетолог | Специалист | 625 |  |
| Менеджер проекта | Специалист | 875 |  |
| Разработчик документации | Специалист | 750 |  |
| Системный администратор | Специалист | 812.5 |  |
| Специалист по качеству | Специалист | 750 |  |
| Специалист по обучению | Специалист | 687.5 |  |
| Специалист по контенту | Специалист | 562.5 |  |
| Специалист по поддержке и сопровождению | Специалист | 812.5 |  |
| Ксерокс | Вычислительная техника |  | 30000 |
| Принтер | Вычислительная техника |  | 20000 |
| Системное программное обеспечение | Программное обеспечение |  | 15000 |
| Прикладное не целевое программное обеспечение | Программное обеспечение |  | 40000 |
| Программные средства разработки | Программное обеспечение |  | 15000 |
| Внешний программный модуль создаваемой системы | Программное обеспечение |  | 600000 |
| Штраф | Компонент ИС |  |  |

## Schedule

| ID | WBS | Task | Duration | Start | Finish | Predecessors | Baseline start | Baseline finish | Baseline duration | Total slack | Free slack | Resources | Work | Cost | Baseline cost |
| --- | --- | --- | --- | --- | --- | --- | --- | --- | --- | --- | --- | --- | --- | --- | --- |
| 1 | 1 | **Разработка системы автоматизированного проектирования** | 156d | 2025-04-02 | 2025-11-05 |  | 2025-04-02 | 2026-01-05 | 199d | 0d |  |  | 4336h | 5,975,900 | 5,974,800 |
| 2 | 1.1 | **Действия, предшествующие разработке САПР** | 48d | 2025-04-02 | 2025-06-06 |  | 2025-04-02 | 2025-06-09 | 49d | 0d |  |  | 744h | 1,060,900 | 1,059,800 |
| 3 | 1.1.1 | **Начало выполнения проекта** | 4d | 2025-04-02 | 2025-04-07 |  | 2025-04-02 | 2025-04-07 | 4d | 0d |  |  | 56h | 127,500 | 127,500 |
| 4 | 1.1.1.1 | Сопоставление действий и цикла SLCM | 1d | 2025-04-02 | 2025-04-02 |  | 2025-04-02 | 2025-04-02 | 1d | 0d |  | Аналитик; Руководитель проекта | 16h | 16,000 | 16,000 |
| 5 | 1.1.1.2 | Распределение ресурсов проекта | 1d | 2025-04-03 | 2025-04-03 | 4 | 2025-04-03 | 2025-04-03 | 1d | 0d |  | Менеджер проекта | 8h | 7,000 | 7,000 |
| 6 | 1.1.1.3 | Управление планом проекта | 1d | 2025-04-04 | 2025-04-04 | 5 | 2025-04-04 | 2025-04-04 | 1d | 0d |  | Менеджер проекта; Руководитель проекта | 16h | 18,000 | 18,000 |
| 7 | 1.1.1.4 | Установка инфраструктуры проекта | 1d | 2025-04-07 | 2025-04-07 | 6 | 2025-04-07 | 2025-04-07 | 1d | 0d |  | Инженер; Компьютер; Системное программное обеспечение; Системный администратор | 16h | 86,500 | 86,500 |
| 8 | 1.1.2 | **Исследование концепции создаваемой системы автоматизированного проектирования** | 8d | 2025-04-08 | 2025-04-17 |  | 2025-04-08 | 2025-04-17 | 8d | 0d |  |  | 128h | 109,000 | 109,000 |
| 9 | 1.1.2.1 | Анализ требований правообладателей к системе | 2d | 2025-04-08 | 2025-04-09 | 7 | 2025-04-08 | 2025-04-09 | 2d | 0d |  | Аналитик; Системный аналитик | 32h | 24,000 | 24,000 |
| 10 | 1.1.2.2 | Формулирование принципиальных подходов | 2d | 2025-04-10 | 2025-04-11 | 9 | 2025-04-10 | 2025-04-11 | 2d | 0d |  | Аналитик; Руководитель проекта | 32h | 32,000 | 32,000 |
| 11 | 1.1.2.3 | Проведение исследований по осуществимости проекта | 1d | 2025-04-14 | 2025-04-14 | 10 | 2025-04-14 | 2025-04-14 | 1d | 0d |  | Аналитик; Специалист по качеству | 16h | 11,000 | 11,000 |
| 12 | 1.1.2.4 | Уточнение и окончательная формулировка идеи или потребности | 1d | 2025-04-15 | 2025-04-15 | 11 | 2025-04-15 | 2025-04-15 | 1d | 0d |  | Аналитик; Маркетолог | 16h | 10,000 | 10,000 |
| 13 | 1.1.2.5 | Разработка системных требований | 2d | 2025-04-16 | 2025-04-17 | 12 | 2025-04-16 | 2025-04-17 | 2d | 0d |  | Программист-разработчик; Системный аналитик | 32h | 32,000 | 32,000 |
| 14 | 1.1.3 | **Проектирование архитектуры САПР и реализация системных компонентов** | 48d | 2025-04-02 | 2025-06-06 |  | 2025-04-02 | 2025-06-09 | 49d | 1d |  |  | 560h | 824,400 | 823,300 |
| 15 | 1.1.3.1 | Анализ функций системы | 2d | 2025-04-18 | 2025-04-21 | 13 | 2025-04-18 | 2025-04-21 | 2d | 0d |  | Аналитик | 16h | 10,000 | 10,000 |
| 16 | 1.1.3.2 | Распределение системных требований между компонентами ИС (Разработка системной архитектуры) | 2d | 2025-04-22 | 2025-04-23 | 15 | 2025-04-22 | 2025-04-23 | 2d | 0d |  | Системный аналитик | 16h | 14,000 | 14,000 |
| 17 | 1.1.3.3 | Распределение системных требований между инкрементами модели ЖЦ | 3d | 2025-04-24 | 2025-04-28 | 16 | 2025-04-24 | 2025-04-28 | 3d | 0d |  | Системный аналитик | 24h | 21,000 | 21,000 |
| 18 | 1.1.3.4 | Декомпозиция системных требований | 2d | 2025-04-29 | 2025-04-30 | 17 | 2025-04-29 | 2025-04-30 | 2d | 0d |  | Системный аналитик | 16h | 14,000 | 14,000 |
| 19 | 1.1.3.5 | Реализация (или закупка) системных компонентов | 13d | 2025-04-02 | 2025-04-18 |  | 2025-04-02 | 2025-04-18 | 13d | 12d |  | Специалист по закупкам | 104h | 58,500 | 58,500 |
| 20 | 1.1.3.6 | Закупка внешнего программного модуля | 24d | 2025-05-06 | 2025-06-06 | 29SS | 2025-05-07 | 2025-06-09 | 24d | 1d | 0d | Внешний программный модуль создаваемой системы; Специалист по закупкам; Штраф | 384h | 706,900 | 705,800 |
| 21 | 1.2 | **Разработка программного обеспечения САПР** | 56d | 2025-05-01 | 2025-07-17 |  | 2025-05-01 | 2025-08-22 | 82d | 0d |  |  | 1616h | 2,267,000 | 2,267,000 |
| 22 | 1.2.1 | **Разработка требований к программному обеспечению САПР** | 3d | 2025-05-01 | 2025-05-05 |  | 2025-05-01 | 2025-05-05 | 3d | 0d |  |  | 56h | 47,500 | 47,500 |
| 23 | 1.2.1.1 | Анализ законодательства, международных и российских стандартов | 1d | 2025-05-01 | 2025-05-01 | 18 | 2025-05-01 | 2025-05-01 | 1d | 133d | 0d | Специалист по качеству | 8h | 6,000 | 6,000 |
| 24 | 1.2.1.2 | Исследование требований к аналогам | 1d | 2025-05-01 | 2025-05-01 | 18 | 2025-05-01 | 2025-05-01 | 1d | 0d |  | Аналитик | 8h | 5,000 | 5,000 |
| 25 | 1.2.1.3 | Разработка требований к программной составляющей ИС | 1d | 2025-05-02 | 2025-05-02 | 24 | 2025-05-02 | 2025-05-02 | 1d | 133d |  | Программист-разработчик; Системный аналитик | 16h | 16,000 | 16,000 |
| 26 | 1.2.1.4 | Разработка требований к интерфейсу | 1d | 2025-05-02 | 2025-05-02 | 24, 23 | 2025-05-02 | 2025-05-02 | 1d | 133d |  | Программист интерфейса пользователя | 8h | 8,500 | 8,500 |
| 27 | 1.2.1.5 | Формирование требований к качеству | 2d | 2025-05-02 | 2025-05-05 | 24 | 2025-05-02 | 2025-05-05 | 2d | 0d |  | Специалист по качеству | 16h | 12,000 | 12,000 |

| ID | WBS | Task | Duration | Start | Finish | Predecessors | Baseline start | Baseline finish | Baseline duration | Total slack | Free slack | Constraint | Resources | Work | Cost | Baseline cost |
| --- | --- | --- | --- | --- | --- | --- | --- | --- | --- | --- | --- | --- | --- | --- | --- | --- |
| 28 | 1.2.2 | **Проектирование программных средств САПР** | 1d | 2025-05-06 | 2025-05-06 |  | 2025-05-06 | 2025-05-07 | 2d | 0d |  |  |  | 16h | 14,000 | 14,000 |
| 29 | 1.2.2.1 | Распределение требований между программными компонентами ИС (проектирование программной архитектуры) | 1d | 2025-05-06 | 2025-05-06 | 27 | 2025-05-07 | 2025-05-07 | 1d | 1d | 0d |  | Системный аналитик | 8h | 7,000 | 7,000 |
| 30 | 1.2.2.2 | Распределение требований между инкрементами модели ЖЦ | 1d | 2025-05-06 | 2025-05-06 | 27 | 2025-05-06 | 2025-05-06 | 1d | 0d |  |  | Системный аналитик | 8h | 7,000 | 7,000 |
| 31 | 1.2.3 | **Проектировние 1-го инкремента программных средств САПР** | 8d | 2025-05-07 | 2025-05-16 |  | 2025-05-07 | 2025-05-22 | 12d | 0d |  |  |  | 120h | 112,500 | 112,500 |
| 32 | 1.2.3.1 | Создание подсистемы эскизного проектирования | 2d | 2025-05-07 | 2025-05-08 | 19, 30 | 2025-05-07 | 2025-05-08 | 2d | 0d |  |  | Программист-разработчик | 16h | 18,000 | 18,000 |
| 33 | 1.2.3.2 | Проектирование чертежно-графического 2D редактора | 2d | 2025-05-07 | 2025-05-08 | 30 | 2025-05-07 | 2025-05-08 | 2d | 0d |  |  | Программист интерфейса пользователя | 16h | 17,000 | 17,000 |
| 34 | 1.2.3.3 | Проектирование подсистемы графического ввода/вывода | 1d | 2025-05-07 | 2025-05-07 | 30 | 2025-05-09 | 2025-05-09 | 1d | 1d |  |  | Программист интерфейса пользователя | 8h | 8,500 | 8,500 |
| 35 | 1.2.3.4 | Создание подсистемы проектирования деталей | 2d | 2025-05-07 | 2025-05-08 | 30 | 2025-05-09 | 2025-05-12 | 2d | 0d |  |  | Программист-разработчик | 16h | 18,000 | 18,000 |
| 36 | 1.2.3.5 | Создание подсистемы корпусных деталей | 1d | 2025-05-07 | 2025-05-07 | 30 | 2025-05-13 | 2025-05-13 | 1d | 1d |  |  | Программист-разработчик | 8h | 9,000 | 9,000 |
| 37 | 1.2.3.6 | Создание подсистемы проектирования сборочных единиц | 1d | 2025-05-07 | 2025-05-07 | 30 | 2025-05-14 | 2025-05-14 | 1d | 1d |  |  | Программист-разработчик | 8h | 9,000 | 9,000 |
| 38 | 1.2.3.7 | Детальное проектирование программных средств каждого компонента | 6d | 2025-05-09 | 2025-05-16 | 37, 36, 35, 34, 33, 32 | 2025-05-15 | 2025-05-22 | 6d | 0d |  | start no earlier than 2025-04-14 | Специалист по обучению | 48h | 33,000 | 33,000 |
| 39 | 1.2.4 | **Конструирование программных средств для каждого компонента САПР** | 16d | 2025-05-19 | 2025-06-09 |  | 2025-05-23 | 2025-07-15 | 38d | 0d |  |  |  | 896h | 873,000 | 873,000 |
| 40 | 1.2.4.1 | **Создание подсистемы эскизного проектирования** | 16d | 2025-05-19 | 2025-06-09 |  | 2025-05-27 | 2025-07-11 | 34d | 0d |  |  |  | 168h | 165,500 | 165,500 |
| 41 | 1.2.4.1.1 | Создание исходного программного кода | 3d | 2025-05-19 | 2025-05-21 | 38 | 2025-05-27 | 2025-05-29 | 3d | 0d |  |  | Программист базы данных; Программист интерфейса пользователя | 48h | 51,000 | 51,000 |
| 42 | 1.2.4.1.2 | Генерирование программного кода | 3d | 2025-05-22 | 2025-05-26 | 41 | 2025-06-03 | 2025-06-05 | 3d | 0d |  |  | Программист-разработчик | 24h | 27,000 | 27,000 |
| 43 | 1.2.4.1.3 | Создание оперативной документации | 1d | 2025-05-27 | 2025-05-27 | 42 | 2025-06-06 | 2025-06-06 | 1d | 0d |  |  | Разработчик документации | 8h | 6,000 | 6,000 |
| 44 | 1.2.4.1.4 | Планирование статического и динамического тестирования | 2d | 2025-05-28 | 2025-05-29 | 43 | 2025-06-09 | 2025-06-10 | 2d | 0d |  |  | Дизайнер тестов; Руководитель группы тестировщиков | 32h | 32,000 | 32,000 |
| 45 | 1.2.4.1.5 | Разработка тестовых требовнаий | 3d | 2025-05-30 | 2025-06-03 | 44 | 2025-06-25 | 2025-06-27 | 3d | 0d |  |  | Дизайнер тестов | 24h | 19,500 | 19,500 |
| 46 | 1.2.4.1.6 | Создание тестовых данных | 2d | 2025-06-04 | 2025-06-05 | 45 | 2025-06-30 | 2025-07-01 | 2d | 0d |  |  | Программист-тестировщик | 16h | 15,000 | 15,000 |
| 47 | 1.2.4.1.7 | Тестирование программных модулей | 2d | 2025-06-06 | 2025-06-09 | 46 | 2025-07-10 | 2025-07-11 | 2d | 0d |  | start no earlier than 2025-04-28 | Программист-тестировщик | 16h | 15,000 | 15,000 |
| 48 | 1.2.4.2 | **Проектирование чертежно-графического 2D редактора** | 15d | 2025-05-19 | 2025-06-06 |  | 2025-05-30 | 2025-07-14 | 32d | 1d |  |  |  | 168h | 164,500 | 164,500 |
| 49 | 1.2.4.2.1 | Создание исходного программного кода | 3d | 2025-05-19 | 2025-05-21 | 38 | 2025-05-30 | 2025-06-03 | 3d | 1d | 0d |  | Программист базы данных; Программист интерфейса пользователя | 48h | 51,000 | 51,000 |
| 50 | 1.2.4.2.2 | Генерирование программного кода | 2d | 2025-05-22 | 2025-05-23 | 49 | 2025-06-06 | 2025-06-09 | 2d | 1d | 0d |  | Программист-разработчик | 16h | 18,000 | 18,000 |
| 51 | 1.2.4.2.3 | Создание оперативной документации | 2d | 2025-05-26 | 2025-05-27 | 50 | 2025-06-10 | 2025-06-11 | 2d | 1d | 0d |  | Разработчик документации | 16h | 12,000 | 12,000 |
| 52 | 1.2.4.2.4 | Планирование статического и динамического тестирования | 3d | 2025-05-28 | 2025-05-30 | 51 | 2025-06-12 | 2025-06-16 | 3d | 1d | 0d |  | Дизайнер тестов; Руководитель группы тестировщиков | 48h | 48,000 | 48,000 |
| 53 | 1.2.4.2.5 | Разработка тестовых требовнаий | 2d | 2025-06-02 | 2025-06-03 | 52 | 2025-06-30 | 2025-07-01 | 2d | 1d | 0d |  | Дизайнер тестов | 16h | 13,000 | 13,000 |
| 54 | 1.2.4.2.6 | Создание тестовых данных | 2d | 2025-06-04 | 2025-06-05 | 53 | 2025-07-02 | 2025-07-03 | 2d | 1d | 0d |  | Программист-тестировщик | 16h | 15,000 | 15,000 |
| 55 | 1.2.4.2.7 | Тестирование программных модулей | 1d | 2025-06-06 | 2025-06-06 | 54 | 2025-07-14 | 2025-07-14 | 1d | 1d |  |  | Программист-тестировщик | 8h | 7,500 | 7,500 |

| ID | WBS | Task | Duration | Start | Finish | Predecessors | Baseline start | Baseline finish | Baseline duration | Total slack | Free slack | Resources | Work | Cost | Baseline cost |
| --- | --- | --- | --- | --- | --- | --- | --- | --- | --- | --- | --- | --- | --- | --- | --- |
| 56 | 1.2.4.3 | **Проектирование подсистемы графического ввода/вывода** | 12d | 2025-05-19 | 2025-06-03 |  | 2025-06-06 | 2025-07-07 | 22d | 4d |  |  | 128h | 125,000 | 125,000 |
| 57 | 1.2.4.3.1 | Создание исходного программного кода | 3d | 2025-05-19 | 2025-05-21 | 38 | 2025-06-06 | 2025-06-10 | 3d | 4d | 0d | Программист базы данных; Программист интерфейса пользователя | 48h | 51,000 | 51,000 |
| 58 | 1.2.4.3.2 | Генерирование программного кода | 2d | 2025-05-22 | 2025-05-23 | 57 | 2025-06-16 | 2025-06-17 | 2d | 4d | 0d | Программист-разработчик | 16h | 18,000 | 18,000 |
| 59 | 1.2.4.3.3 | Создание оперативной документации | 2d | 2025-05-26 | 2025-05-27 | 58 | 2025-06-18 | 2025-06-19 | 2d | 4d | 0d | Разработчик документации | 16h | 12,000 | 12,000 |
| 60 | 1.2.4.3.4 | Планирование статического и динамического тестирования | 1d | 2025-05-28 | 2025-05-28 | 59 | 2025-06-20 | 2025-06-20 | 1d | 4d | 0d | Дизайнер тестов; Руководитель группы тестировщиков | 16h | 16,000 | 16,000 |
| 61 | 1.2.4.3.5 | Разработка тестовых требовнаий | 2d | 2025-05-29 | 2025-05-30 | 60 | 2025-07-02 | 2025-07-03 | 2d | 4d | 0d | Дизайнер тестов | 16h | 13,000 | 13,000 |
| 62 | 1.2.4.3.6 | Создание тестовых данных | 1d | 2025-06-02 | 2025-06-02 | 61 | 2025-07-04 | 2025-07-04 | 1d | 4d | 0d | Программист-тестировщик | 8h | 7,500 | 7,500 |
| 63 | 1.2.4.3.7 | Тестирование программных модулей | 1d | 2025-06-03 | 2025-06-03 | 62 | 2025-07-07 | 2025-07-07 | 1d | 4d |  | Программист-тестировщик | 8h | 7,500 | 7,500 |
| 64 | 1.2.4.4 | **Создание подсистемы проектирования деталей** | 14d | 2025-05-19 | 2025-06-05 |  | 2025-06-04 | 2025-07-09 | 26d | 2d |  |  | 144h | 142,000 | 142,000 |
| 65 | 1.2.4.4.1 | Создание исходного программного кода | 2d | 2025-05-19 | 2025-05-20 | 38 | 2025-06-04 | 2025-06-05 | 2d | 2d | 0d | Программист базы данных; Программист интерфейса пользователя | 32h | 34,000 | 34,000 |
| 66 | 1.2.4.4.2 | Генерирование программного кода | 4d | 2025-05-21 | 2025-05-26 | 65 | 2025-06-10 | 2025-06-13 | 4d | 2d | 0d | Программист-разработчик | 32h | 36,000 | 36,000 |
| 67 | 1.2.4.4.3 | Создание оперативной документации | 2d | 2025-05-27 | 2025-05-28 | 66 | 2025-06-16 | 2025-06-17 | 2d | 2d | 0d | Разработчик документации | 16h | 12,000 | 12,000 |
| 68 | 1.2.4.4.4 | Планирование статического и динамического тестирования | 2d | 2025-05-29 | 2025-05-30 | 67 | 2025-06-18 | 2025-06-19 | 2d | 2d | 0d | Дизайнер тестов; Руководитель группы тестировщиков | 32h | 32,000 | 32,000 |
| 69 | 1.2.4.4.5 | Разработка тестовых требовнаий | 2d | 2025-06-02 | 2025-06-03 | 68 | 2025-07-04 | 2025-07-07 | 2d | 2d | 0d | Дизайнер тестов | 16h | 13,000 | 13,000 |
| 70 | 1.2.4.4.6 | Создание тестовых данных | 1d | 2025-06-04 | 2025-06-04 | 69 | 2025-07-08 | 2025-07-08 | 1d | 2d | 0d | Программист-тестировщик | 8h | 7,500 | 7,500 |
| 71 | 1.2.4.4.7 | Тестирование программных модулей | 1d | 2025-06-05 | 2025-06-05 | 70 | 2025-07-09 | 2025-07-09 | 1d | 2d |  | Программист-тестировщик | 8h | 7,500 | 7,500 |
| 72 | 1.2.4.5 | **Создание подсистемы корпусных деталей** | 15d | 2025-05-19 | 2025-06-06 |  | 2025-05-23 | 2025-06-18 | 19d | 1d |  |  | 144h | 135,500 | 135,500 |
| 73 | 1.2.4.5.1 | Создание исходного программного кода | 1d | 2025-05-19 | 2025-05-19 | 38 | 2025-05-23 | 2025-05-23 | 1d | 1d | 0d | Программист базы данных; Программист интерфейса пользователя | 16h | 17,000 | 17,000 |
| 74 | 1.2.4.5.2 | Генерирование программного кода | 2d | 2025-05-20 | 2025-05-21 | 73 | 2025-05-26 | 2025-05-27 | 2d | 1d | 0d | Программист-разработчик | 16h | 18,000 | 18,000 |
| 75 | 1.2.4.5.3 | Создание оперативной документации | 3d | 2025-05-22 | 2025-05-26 | 74 | 2025-05-28 | 2025-05-30 | 3d | 1d | 0d | Разработчик документации | 24h | 18,000 | 18,000 |
| 76 | 1.2.4.5.4 | Планирование статического и динамического тестирования | 2d | 2025-05-27 | 2025-05-28 | 75 | 2025-06-02 | 2025-06-03 | 2d | 1d | 0d | Дизайнер тестов; Руководитель группы тестировщиков | 32h | 32,000 | 32,000 |
| 77 | 1.2.4.5.5 | Разработка тестовых требовнаий | 2d | 2025-05-29 | 2025-05-30 | 76 | 2025-06-06 | 2025-06-11 | 2d | 1d | 0d | Дизайнер тестов | 16h | 13,000 | 13,000 |
| 78 | 1.2.4.5.6 | Создание тестовых данных | 3d | 2025-06-02 | 2025-06-04 | 77 | 2025-06-12 | 2025-06-16 | 3d | 1d | 0d | Программист-тестировщик | 24h | 22,500 | 22,500 |
| 79 | 1.2.4.5.7 | Тестирование программных модулей | 2d | 2025-06-05 | 2025-06-06 | 78 | 2025-06-17 | 2025-06-18 | 2d | 1d |  | Программист-тестировщик | 16h | 15,000 | 15,000 |

| ID | WBS | Task | Duration | Start | Finish | Predecessors | Baseline start | Baseline finish | Baseline duration | Total slack | Free slack | Resources | Work | Cost | Baseline cost |
| --- | --- | --- | --- | --- | --- | --- | --- | --- | --- | --- | --- | --- | --- | --- | --- |
| 80 | 1.2.4.6 | **Создание подсистемы проектирования сборочных единиц** | 15d | 2025-05-19 | 2025-06-06 |  | 2025-05-26 | 2025-07-15 | 37d | 1d |  |  | 144h | 140,500 | 140,500 |
| 81 | 1.2.4.6.1 | Создание исходного программного кода | 1d | 2025-05-19 | 2025-05-19 | 38 | 2025-05-26 | 2025-05-26 | 1d | 1d | 0d | Программист базы данных; Программист интерфейса пользователя | 16h | 17,000 | 17,000 |
| 82 | 1.2.4.6.2 | Генерирование программного кода | 4d | 2025-05-20 | 2025-05-23 | 81 | 2025-05-28 | 2025-06-02 | 4d | 1d | 0d | Программист-разработчик | 32h | 36,000 | 36,000 |
| 83 | 1.2.4.6.3 | Создание оперативной документации | 1d | 2025-05-26 | 2025-05-26 | 82 | 2025-06-03 | 2025-06-03 | 1d | 1d | 0d | Разработчик документации | 8h | 6,000 | 6,000 |
| 84 | 1.2.4.6.4 | Планирование статического и динамического тестирования | 2d | 2025-05-27 | 2025-05-28 | 83 | 2025-06-04 | 2025-06-05 | 2d | 1d | 0d | Дизайнер тестов; Руководитель группы тестировщиков | 32h | 32,000 | 32,000 |
| 85 | 1.2.4.6.5 | Разработка тестовых требовнаий | 3d | 2025-05-29 | 2025-06-02 | 84 | 2025-06-17 | 2025-06-24 | 3d | 1d | 0d | Дизайнер тестов | 24h | 19,500 | 19,500 |
| 86 | 1.2.4.6.6 | Создание тестовых данных | 3d | 2025-06-03 | 2025-06-05 | 85 | 2025-06-25 | 2025-06-27 | 3d | 1d | 0d | Программист-тестировщик | 24h | 22,500 | 22,500 |
| 87 | 1.2.4.6.7 | Тестирование программных модулей | 1d | 2025-06-06 | 2025-06-06 | 86, 20FF | 2025-07-15 | 2025-07-15 | 1d | 1d |  | Программист-тестировщик | 8h | 7,500 | 7,500 |
| 88 | 1.2.5 | **Комплексирование программных средств САПР в рамках каждого инкремента модели ЖЦ** | 4d | 2025-06-10 | 2025-06-13 |  | 2025-07-16 | 2025-07-21 | 4d | 0d |  |  | 96h | 97,000 | 97,000 |
| 89 | 1.2.5.1 | Разработка плана интеграции компонент программных средств | 2d | 2025-06-10 | 2025-06-11 | 47, 55, 63, 71, 79, 87 | 2025-07-16 | 2025-07-17 | 2d | 0d |  | Менеджер проекта; Программист-разработчик; Руководитель группы разработчиков | 48h | 52,000 | 52,000 |
| 90 | 1.2.5.2 | Выполнение интеграции программных средств | 2d | 2025-06-12 | 2025-06-13 | 89 | 2025-07-18 | 2025-07-21 | 2d | 0d |  | Программист базы данных; Программист-тестировщик; Системный администратор | 48h | 45,000 | 45,000 |
| 91 | 1.2.6 | **Квалификационное тестирование программных средств САПР, в рамках каждого инкремента модели ЖЦ** | 12d | 2025-06-16 | 2025-07-01 |  | 2025-07-22 | 2025-08-06 | 12d | 0d |  |  | 216h | 903,000 | 903,000 |
| 92 | 1.2.6.1 | Разработка плана квалификационного тестирования программных средств | 3d | 2025-06-16 | 2025-06-18 | 90 | 2025-07-22 | 2025-07-24 | 3d | 0d |  | Дизайнер тестов; Менеджер проекта; Руководитель группы тестировщиков; Прикладное не целевое программное обеспечение | 72h | 109,000 | 109,000 |
| 93 | 1.2.6.2 | Разработка требований к квалификационным тестам | 4d | 2025-06-19 | 2025-06-24 | 92 | 2025-07-25 | 2025-07-30 | 4d | 0d |  | Дизайнер тестов; Компьютер; Специалист по качеству | 64h | 110,000 | 110,000 |
| 94 | 1.2.6.3 | Создание тестовых данных к квалификационным тестам | 3d | 2025-06-25 | 2025-06-27 | 93 | 2025-07-31 | 2025-08-04 | 3d | 0d |  | Дизайнер тестов; Программист-тестировщик; Программные средства разработки | 48h | 57,000 | 57,000 |
| 95 | 1.2.6.4 | Выполнение квалификационного тестирования | 2d | 2025-06-30 | 2025-07-01 | 94 | 2025-08-05 | 2025-08-06 | 2d | 0d |  | Внешний программный модуль создаваемой системы; Программист-тестировщик; Специалист по качеству | 32h | 627,000 | 627,000 |
| 96 | 1.2.7 | **Комплексирование САПР в рамках каждого инкремента модели ЖЦ** | 6d | 2025-07-02 | 2025-07-09 |  | 2025-08-07 | 2025-08-14 | 6d | 0d |  |  | 96h | 96,000 | 96,000 |
| 97 | 1.2.7.1 | Разработка плана интеграции компонент САПР | 2d | 2025-07-02 | 2025-07-03 | 95 | 2025-08-07 | 2025-08-08 | 2d | 0d |  | Руководитель группы разработчиков; Системный аналитик | 32h | 34,000 | 34,000 |
| 98 | 1.2.7.2 | Выполнение интеграции САПР | 4d | 2025-07-04 | 2025-07-09 | 97 | 2025-08-11 | 2025-08-14 | 4d | 0d |  | Программист-разработчик; Системный администратор | 64h | 62,000 | 62,000 |
| 99 | 1.2.8 | **Квалификационное тестирование САПР в рамках каждого инкремента модели ЖЦ** | 6d | 2025-07-10 | 2025-07-17 |  | 2025-08-15 | 2025-08-22 | 6d | 0d |  |  | 120h | 124,000 | 124,000 |
| 100 | 1.2.8.1 | Разработка плана системного тестирования ИС | 1d | 2025-07-10 | 2025-07-10 | 98 | 2025-08-15 | 2025-08-15 | 1d | 0d |  | Дизайнер тестов; Менеджер проекта; Руководитель группы тестировщиков | 24h | 23,000 | 23,000 |
| 101 | 1.2.8.2 | Разработка требований к квалификационным тестам ИС | 2d | 2025-07-11 | 2025-07-14 | 100 | 2025-08-18 | 2025-08-19 | 2d | 0d |  | Программист-тестировщик; Системный аналитик; Специалист по качеству | 48h | 41,000 | 41,000 |
| 102 | 1.2.8.3 | Создание тестовых данных к квалификационным тестам ИС | 2d | 2025-07-15 | 2025-07-16 | 101 | 2025-08-20 | 2025-08-21 | 2d | 0d |  | Дизайнер тестов; Программист-тестировщик; Программные средства разработки | 32h | 43,000 | 43,000 |
| 103 | 1.2.8.4 | Выполнение квалификационного тестирования ИС | 1d | 2025-07-17 | 2025-07-17 | 102 | 2025-08-22 | 2025-08-22 | 1d | 0d |  | Программист-тестировщик; Руководитель группы тестировщиков | 16h | 17,000 | 17,000 |

| ID | WBS | Task | Duration | Start | Finish | Predecessors | Baseline start | Baseline finish | Baseline duration | Total slack | Resources | Work | Cost | Baseline cost |
| --- | --- | --- | --- | --- | --- | --- | --- | --- | --- | --- | --- | --- | --- | --- |
| 104 | 1.3 | **Действия, следующие после разработки программных средств САПР** | 6d | 2025-07-18 | 2025-07-25 |  | 2025-08-25 | 2025-09-01 | 6d | 0d |  | 128h | 150,500 | 150,500 |
| 105 | 1.3.1 | **Инсталляция программных средств САПР в рамках каждого инкремента модели ЖЦ** | 2d | 2025-07-18 | 2025-07-21 |  | 2025-08-25 | 2025-08-26 | 2d | 0d |  | 32h | 43,500 | 43,500 |
| 106 | 1.3.1.1 | Разработка плана установки программных средств | 1d | 2025-07-18 | 2025-07-18 | 103 | 2025-08-25 | 2025-08-25 | 1d | 0d | Менеджер проекта; Программист-разработчик; Системное программное обеспечение | 16h | 31,000 | 31,000 |
| 107 | 1.3.1.2 | Установка программных средств | 1d | 2025-07-21 | 2025-07-21 | 106 | 2025-08-26 | 2025-08-26 | 1d | 0d | Администратор; Системный администратор | 16h | 12,500 | 12,500 |
| 108 | 1.3.2 | **Поддержка приемки программных средствСАПР в рамках каждого инкремента модели ЖЦ** | 4d | 2025-07-22 | 2025-07-25 |  | 2025-08-27 | 2025-09-01 | 4d | 0d |  | 96h | 107,000 | 107,000 |
| 109 | 1.3.2.1 | Разработка требований к приемочным тестам | 1d | 2025-07-22 | 2025-07-22 | 107 | 2025-08-27 | 2025-08-27 | 1d | 0d | Дизайнер тестов; Руководитель группы тестировщиков; Системный аналитик | 24h | 23,000 | 23,000 |
| 110 | 1.3.2.2 | Создание тестовых данных к приемочным тестам | 1d | 2025-07-23 | 2025-07-23 | 109 | 2025-08-28 | 2025-08-28 | 1d | 0d | Дизайнер тестов; Программист базы данных; Программист-тестировщик; Программные средства разработки | 24h | 37,500 | 37,500 |
| 111 | 1.3.2.3 | Выполнение приемочных тестов | 1d | 2025-07-24 | 2025-07-24 | 110 | 2025-08-29 | 2025-08-29 | 1d | 0d | Программист-тестировщик; Руководитель группы тестировщиков; Специалист по качеству | 24h | 23,000 | 23,000 |
| 112 | 1.3.2.4 | Приемка программных средств в системной среде | 1d | 2025-07-25 | 2025-07-25 | 111 | 2025-09-01 | 2025-09-01 | 1d | 0d | Руководитель проекта; Системный администратор; Специалист по качеству | 24h | 23,500 | 23,500 |
| 113 | 1.4 | **Разработка программного обеспечения САПР** | 73d | 2025-07-28 | 2025-11-05 |  | 2025-09-02 | 2026-01-05 | 90d | 0d |  | 1848h | 2,497,500 | 2,497,500 |
| 114 | 1.4.1 | **Проектирование 3-го инкремента программных средств САПР** | 9d | 2025-07-28 | 2025-08-07 |  | 2025-09-02 | 2025-09-18 | 13d | 0d |  | 360h | 338,000 | 338,000 |
| 115 | 1.4.1.1 | Проектирование системы геометрического трехмерного моделирования механических объектов | 4d | 2025-07-28 | 2025-07-31 | 112 | 2025-09-09 | 2025-09-12 | 4d | 1d | Инженер; Программист-разработчик | 64h | 56,000 | 56,000 |
| 116 | 1.4.1.2 | Проектирование подсистемы моделирования динамики проектируемой конструкции | 5d | 2025-07-28 | 2025-08-01 | 112 | 2025-09-02 | 2025-09-08 | 5d | 0d | Аналитик; Инженер; Программист-разработчик | 120h | 95,000 | 95,000 |
| 117 | 1.4.1.3 | Проектирование обучающей подсистемы для освоения пользователями технологий, реализованных в САПР | 2d | 2025-07-28 | 2025-07-29 | 112 | 2025-09-02 | 2025-09-03 | 2d | 3d | Программист интерфейса пользователя; Специалист по качеству; Специалист по обучению | 48h | 40,000 | 40,000 |
| 118 | 1.4.1.4 | Детальное проектирование программных средств каждого компонента | 4d | 2025-08-04 | 2025-08-07 | 117, 115, 116 | 2025-09-15 | 2025-09-18 | 4d | 0d | Программист-разработчик; Программист базы данных; Программист интерфейса пользователя; Программные средства разработки; Системный аналитик | 128h | 147,000 | 147,000 |
| 119 | 1.4.2 | **Конструирование программных средств для каждого компонента САПР** | 25d | 2025-08-08 | 2025-09-11 |  | 2025-09-19 | 2025-11-11 | 38d | 0d |  | 728h | 706,000 | 706,000 |
| 120 | 1.4.2.1 | **Проектирование системы геометрического трехмерного моделирования механических объектов** | 25d | 2025-08-08 | 2025-09-11 |  | 2025-09-19 | 2025-10-27 | 27d | 0d |  | 248h | 239,000 | 239,000 |
| 121 | 1.4.2.1.1 | Создание исходного программного кода | 3d | 2025-08-08 | 2025-08-12 | 118 | 2025-09-19 | 2025-09-23 | 3d | 0d | Программист базы данных; Программист интерфейса пользователя | 48h | 51,000 | 51,000 |
| 122 | 1.4.2.1.2 | Генерирование программного кода | 4d | 2025-08-13 | 2025-08-18 | 121 | 2025-09-24 | 2025-09-29 | 4d | 0d | Программист-разработчик | 32h | 36,000 | 36,000 |
| 123 | 1.4.2.1.3 | Создание оперативной документации | 3d | 2025-08-19 | 2025-08-21 | 122 | 2025-09-30 | 2025-10-02 | 3d | 0d | Разработчик документации | 24h | 18,000 | 18,000 |
| 124 | 1.4.2.1.4 | Планирование статического и динамического тестирования | 3d | 2025-08-22 | 2025-08-26 | 123 | 2025-10-03 | 2025-10-07 | 3d | 0d | Дизайнер тестов; Руководитель группы тестировщиков | 48h | 48,000 | 48,000 |
| 125 | 1.4.2.1.5 | Разработка тестовых требовнаий | 4d | 2025-08-27 | 2025-09-01 | 124 | 2025-10-08 | 2025-10-15 | 4d | 0d | Дизайнер тестов | 32h | 26,000 | 26,000 |
| 126 | 1.4.2.1.6 | Создание тестовых данных | 4d | 2025-09-02 | 2025-09-05 | 125 | 2025-10-16 | 2025-10-21 | 4d | 0d | Программист-тестировщик | 32h | 30,000 | 30,000 |
| 127 | 1.4.2.1.7 | Тестирование программных модулей | 4d | 2025-09-08 | 2025-09-11 | 126 | 2025-10-22 | 2025-10-27 | 4d | 0d | Программист-тестировщик | 32h | 30,000 | 30,000 |

| ID | WBS | Task | Duration | Start | Finish | Predecessors | Baseline start | Baseline finish | Baseline duration | Total slack | Free slack | Resources | Work | Cost | Baseline cost |
| --- | --- | --- | --- | --- | --- | --- | --- | --- | --- | --- | --- | --- | --- | --- | --- |
| 128 | 1.4.2.2 | **Проектирование подсистемы моделирования динамики проектируемой конструкции** | 20d | 2025-08-08 | 2025-09-04 |  | 2025-10-01 | 2025-11-06 | 27d | 5d |  |  | 224h | 217,500 | 217,500 |
| 129 | 1.4.2.2.1 | Создание исходного программного кода | 4d | 2025-08-08 | 2025-08-13 | 118 | 2025-10-01 | 2025-10-06 | 4d | 5d | 0d | Программист базы данных; Программист интерфейса пользователя | 64h | 68,000 | 68,000 |
| 130 | 1.4.2.2.2 | Генерирование программного кода | 2d | 2025-08-14 | 2025-08-15 | 129 | 2025-10-07 | 2025-10-08 | 2d | 5d | 0d | Программист-разработчик | 16h | 18,000 | 18,000 |
| 131 | 1.4.2.2.3 | Создание оперативной документации | 3d | 2025-08-18 | 2025-08-20 | 130 | 2025-10-10 | 2025-10-14 | 3d | 5d | 0d | Разработчик документации | 24h | 18,000 | 18,000 |
| 132 | 1.4.2.2.4 | Планирование статического и динамического тестирования | 4d | 2025-08-21 | 2025-08-26 | 131 | 2025-10-15 | 2025-10-21 | 5d | 5d | 0d | Дизайнер тестов; Руководитель группы тестировщиков | 64h | 64,000 | 64,000 |
| 133 | 1.4.2.2.5 | Разработка тестовых требовнаий | 3d | 2025-08-27 | 2025-08-29 | 132 | 2025-10-28 | 2025-10-30 | 3d | 5d | 0d | Дизайнер тестов | 24h | 19,500 | 19,500 |
| 134 | 1.4.2.2.6 | Создание тестовых данных | 2d | 2025-09-01 | 2025-09-02 | 133 | 2025-11-03 | 2025-11-04 | 2d | 5d | 0d | Программист-тестировщик | 16h | 15,000 | 15,000 |
| 135 | 1.4.2.2.7 | Тестирование программных модулей | 2d | 2025-09-03 | 2025-09-04 | 134 | 2025-11-05 | 2025-11-06 | 2d | 5d |  | Программист-тестировщик | 16h | 15,000 | 15,000 |
| 136 | 1.4.2.3 | **Проектирование обучающей подсистемы для освоения пользователями технологий, реализованных в САПР** | 25d | 2025-08-08 | 2025-09-11 |  | 2025-09-24 | 2025-11-11 | 35d | 0d |  |  | 256h | 249,500 | 249,500 |
| 137 | 1.4.2.3.1 | Создание исходного программного кода | 5d | 2025-08-08 | 2025-08-14 | 118 | 2025-09-24 | 2025-09-30 | 5d | 0d |  | Программист базы данных; Программист интерфейса пользователя | 80h | 85,000 | 85,000 |
| 138 | 1.4.2.3.2 | Генерирование программного кода | 4d | 2025-08-15 | 2025-08-20 | 137 | 2025-10-01 | 2025-10-06 | 4d | 0d |  | Программист-разработчик | 32h | 36,000 | 36,000 |
| 139 | 1.4.2.3.3 | Создание оперативной документации | 3d | 2025-08-21 | 2025-08-25 | 138 | 2025-10-07 | 2025-10-09 | 3d | 0d |  | Разработчик документации | 24h | 18,000 | 18,000 |
| 140 | 1.4.2.3.4 | Планирование статического и динамического тестирования | 2d | 2025-08-26 | 2025-08-27 | 139 | 2025-10-10 | 2025-10-13 | 2d | 0d |  | Дизайнер тестов; Руководитель группы тестировщиков | 32h | 32,000 | 32,000 |
| 141 | 1.4.2.3.5 | Разработка тестовых требовнаий | 4d | 2025-08-28 | 2025-09-02 | 140 | 2025-10-22 | 2025-10-27 | 4d | 0d |  | Дизайнер тестов | 32h | 26,000 | 26,000 |
| 142 | 1.4.2.3.6 | Создание тестовых данных | 4d | 2025-09-03 | 2025-09-08 | 141 | 2025-10-28 | 2025-10-31 | 4d | 0d |  | Программист-тестировщик | 32h | 30,000 | 30,000 |
| 143 | 1.4.2.3.7 | Тестирование программных модулей | 3d | 2025-09-09 | 2025-09-11 | 142 | 2025-11-07 | 2025-11-11 | 3d | 0d |  | Программист-тестировщик | 24h | 22,500 | 22,500 |
| 144 | 1.4.3 | **Комплексирование программных средств САПР в рамках каждого инкремента модели ЖЦ** | 8d | 2025-09-12 | 2025-09-23 |  | 2025-11-12 | 2025-11-21 | 8d | 0d |  |  | 192h | 194,000 | 194,000 |
| 145 | 1.4.3.1 | Разработка плана интеграции компонент программных средств | 4d | 2025-09-12 | 2025-09-17 | 127, 135, 143 | 2025-11-12 | 2025-11-17 | 4d | 0d |  | Менеджер проекта; Программист-разработчик; Руководитель группы разработчиков | 96h | 104,000 | 104,000 |
| 146 | 1.4.3.2 | Выполнение интеграции программных средств | 4d | 2025-09-18 | 2025-09-23 | 145 | 2025-11-18 | 2025-11-21 | 4d | 0d |  | Программист базы данных; Программист-тестировщик; Системный администратор | 96h | 90,000 | 90,000 |
| 147 | 1.4.4 | **Квалификационное тестирование программных средств САПР, в рамках каждого инкремента модели ЖЦ** | 15d | 2025-09-24 | 2025-10-14 |  | 2025-11-24 | 2025-12-12 | 15d | 0d |  |  | 280h | 962,500 | 962,500 |
| 148 | 1.4.4.1 | Разработка плана квалификационного тестирования программных средств | 5d | 2025-09-24 | 2025-09-30 | 146 | 2025-11-24 | 2025-11-28 | 5d | 0d |  | Дизайнер тестов; Менеджер проекта; Руководитель группы тестировщиков; Прикладное не целевое программное обеспечение | 120h | 155,000 | 155,000 |
| 149 | 1.4.4.2 | Разработка требований к квалификационным тестам | 4d | 2025-10-01 | 2025-10-06 | 148 | 2025-12-01 | 2025-12-04 | 4d | 0d |  | Дизайнер тестов; Компьютер; Специалист по качеству | 64h | 110,000 | 110,000 |
| 150 | 1.4.4.3 | Создание тестовых данных к квалификационным тестам | 3d | 2025-10-07 | 2025-10-09 | 149 | 2025-12-05 | 2025-12-09 | 3d | 0d |  | Дизайнер тестов; Программист-тестировщик; Программные средства разработки | 48h | 57,000 | 57,000 |
| 151 | 1.4.4.4 | Выполнение квалификационного тестирования | 3d | 2025-10-10 | 2025-10-14 | 150 | 2025-12-10 | 2025-12-12 | 3d | 0d |  | Внешний программный модуль создаваемой системы; Программист-тестировщик; Специалист по качеству | 48h | 640,500 | 640,500 |

| ID | WBS | Task | Type | Duration | Start | Finish | Predecessors | Baseline start | Baseline finish | Baseline duration | Total slack | Resources | Work | Cost | Baseline cost |
| --- | --- | --- | --- | --- | --- | --- | --- | --- | --- | --- | --- | --- | --- | --- | --- |
| 152 | 1.4.5 | **Комплексирование САПР в рамках каждого инкремента модели ЖЦ** |  | 8d | 2025-10-15 | 2025-10-24 |  | 2025-12-15 | 2025-12-24 | 8d | 0d |  | 128h | 130,000 | 130,000 |
| 153 | 1.4.5.1 | Разработка плана интеграции компонент САПР |  | 4d | 2025-10-15 | 2025-10-20 | 151 | 2025-12-15 | 2025-12-18 | 4d | 0d | Руководитель группы разработчиков; Системный аналитик | 64h | 68,000 | 68,000 |
| 154 | 1.4.5.2 | Выполнение интеграции САПР |  | 4d | 2025-10-21 | 2025-10-24 | 153 | 2025-12-19 | 2025-12-24 | 4d | 0d | Программист-разработчик; Системный администратор | 64h | 62,000 | 62,000 |
| 155 | 1.4.6 | **Квалификационное тестирование САПР в рамках каждого инкремента модели ЖЦ** |  | 8d | 2025-10-27 | 2025-11-05 |  | 2025-12-25 | 2026-01-05 | 8d | 0d |  | 160h | 167,000 | 167,000 |
| 156 | 1.4.6.1 | Разработка плана системного тестирования ИС |  | 2d | 2025-10-27 | 2025-10-28 | 154 | 2025-12-25 | 2025-12-26 | 2d | 0d | Дизайнер тестов; Менеджер проекта; Руководитель группы тестировщиков | 48h | 46,000 | 46,000 |
| 157 | 1.4.6.2 | Разработка требований к квалификационным тестам ИС |  | 2d | 2025-10-29 | 2025-10-30 | 156 | 2025-12-29 | 2025-12-30 | 2d | 0d | Программист-тестировщик; Системный аналитик; Специалист по качеству | 48h | 41,000 | 41,000 |
| 158 | 1.4.6.3 | Создание тестовых данных к квалификационным тестам ИС |  | 1d | 2025-10-31 | 2025-10-31 | 157 | 2025-12-31 | 2025-12-31 | 1d | 0d | Дизайнер тестов; Программист-тестировщик; Программные средства разработки | 16h | 29,000 | 29,000 |
| 159 | 1.4.6.4 | Выполнение квалификационного тестирования ИС |  | 3d | 2025-11-03 | 2025-11-05 | 158 | 2026-01-01 | 2026-01-05 | 3d | 0d | Программист-тестировщик; Руководитель группы тестировщиков | 48h | 51,000 | 51,000 |
| 160 | 2 | **Действия, следующие после разработки программных средств САПР** | inactive | 1d? | 2025-04-02 | 2025-04-02 |  |  |  |  | 155d |  |  |  | -0 |
| 161 | 2.1 | **Инсталляция программных средств САПР в рамках каждого инкремента модели ЖЦ** | inactive | 1d | 2025-04-02 | 2025-04-02 |  |  |  |  | 155d |  |  |  | -0 |
| 162 | 2.1.1 | Разработка плана установки программных средств | inactive | 1d | 2025-04-02 | 2025-04-02 |  |  |  |  | 155d |  |  |  | -0 |
| 163 | 2.1.2 | Установка программных средств | inactive | 1d | 2025-04-02 | 2025-04-02 |  |  |  |  | 155d |  |  |  | -0 |
| 164 | 2.2 | **Поддержка приемки программных средствСАПР в рамках каждого инкремента модели ЖЦ** | inactive | 1d? | 2025-04-02 | 2025-04-02 |  |  |  |  | 155d |  |  |  | -0 |
| 165 | 2.2.1 | Разработка требований к приемочным тестам | inactive | 1d | 2025-04-02 | 2025-04-02 |  |  |  |  | 155d |  |  |  | -0 |
| 166 | 2.2.2 | Создание тестовых данных к приемочным тестам | inactive | 1d | 2025-04-02 | 2025-04-02 |  |  |  |  | 155d |  |  |  | -0 |
| 167 | 2.2.3 | Выполнение приемочных тестов | inactive | 1d | 2025-04-02 | 2025-04-02 |  |  |  |  | 155d |  |  |  | -0 |
| 168 | 2.2.4 | Приемка программных средств в системной среде | inactive | 1d | 2025-04-02 | 2025-04-02 |  |  |  |  | 155d |  |  |  | -0 |
